# LafroX — Etapas 1 y 2 con dependencias visibles

Schedule from GanttProject, 2027-02-01 to 2028-11-30.
LafroX
Vista editable. Solo se fusionan paquetes o hitos con igual inicio, duración, criticidad y exactamente las mismas relaciones entrantes y salientes, tipos y desfases. Las demás tareas permanecen separadas para conservar las dependencias visibles y las fechas originales. Criticidad conservada del archivo original.

## Calendars

- Project calendar: Mon-Fri working; Sat-Sun off. Exceptions (off unless hours are given): 2027-03-26 to 2027-03-27, 2027-05-01, 2027-05-21, 2027-06-21, 2027-06-28, 2027-07-16, 2027-08-15, 2027-09-17 to 2027-09-19, 2027-10-11, 2027-10-31 to 2027-11-01, 2027-12-08, 2027-12-25, 2028-01-01, 2028-04-14 to 2028-04-15, 2028-05-01, 2028-05-21, 2028-06-20, 2028-06-26, 2028-07-16, 2028-08-15, 2028-09-18 to 2028-09-19, 2028-10-09, 2028-10-27, 2028-11-01.

## Schedule

| ID | Task | Type | Duration | Start | Finish | Predecessors | Holgura (días hábiles) | Crítica |
| --- | --- | --- | --- | --- | --- | --- | --- | --- |
| 1 | RC / 5.1.4 Especificación y compra del sistema de cadena de frío |  | 42d | 2027-02-01 | 2027-03-31 |  | 0 | Sí |
| 2 | PT/H / 7 elementos: 1.1.1, 1.1.2, 1.1.3, 1.4.1, 1.4.2, 1.9.1, 1.9.2 |  | 7d | 2027-02-01 | 2027-02-09 |  | 13 | No |
| 3 | PT/H / 1.2.1 Documento de especificación de requerimientos y línea base de alcance de la Etapa 1 (H1) |  | 7d | 2027-02-01 | 2027-02-09 |  | 13 | No |
| 4 | PT/H / 1.2.2 Documento de reglas de ruteo capturadas al planificador de rutas |  | 64d | 2027-02-01 | 2027-04-30 |  |  | No |
| 5 | PT/H / 1.2.3 Documento de especificación de las interfaces sin documentación del ERP, del WMS de 2013 y de la telemetría del tercero |  | 7d | 2027-02-01 | 2027-02-09 |  | 77 | No |
| 6 | PT/H / 5 elementos: 1.3.5, 1.6.2, 1.8.1, 1.8.3, 1.8.6 |  | 419d | 2027-02-01 | 2028-09-29 |  |  | No |
| 7 | PT/H / 2 elementos: 2.3.1, 2.3.2 |  | 21d | 2027-02-01 | 2027-03-01 |  | 14 | No |
| 8 | PT/H / 1.3.1 Plan para la dirección del proyecto, con el calendario de congelamientos de septiembre, diciembre y el cierre mensual |  | 7d | 2027-02-10 | 2027-02-18 |  | 6 | No |
| 9 | PT/H / 1.2.4 Matriz de trazabilidad: requerimiento, módulo, paquete y prueba (H1) |  | 7d | 2027-03-01 | 2027-03-09 |  | 5 | No |
| 10 | PT/H / 7 elementos: 1.3.2, 1.3.3, 1.3.4, 1.5.1, 1.6.1, 1.9.3, 5.1.1 |  | 7d | 2027-03-01 | 2027-03-09 |  | 15 | No |
| 11 | PT/H / 2.1.1 Documento de arquitectura lógica: capas, módulos M1 a M12 e interfaces |  | 20d | 2027-03-01 | 2027-03-29 | 3FF, 21FF | 2 | No |
| 12 | PT/H / 3 elementos: 2.1.2, 2.1.3, 2.2.4 |  | 20d | 2027-03-01 | 2027-03-29 |  | 2 | No |
| 13 | PT/H / 2.2.1 Plan de seguridad de la información |  | 20d | 2027-03-01 | 2027-03-29 |  | 2 | No |
| 14 | PT/H / 2 elementos: 2.3.3, 2.6.1 |  | 20d | 2027-03-01 | 2027-03-29 |  | 2 | No |
| 15 | PT/H / 3.10.2.1 Innovación 2: informe de medición inicial y contrato de evidencia (INN-02.P1) |  | 36d | 2027-03-01 | 2027-04-20 |  | 8 | No |
| 16 | PT/H / 5.2.1 Contrato de los servicios de AWS |  | 7d | 2027-03-01 | 2027-03-09 |  | 15 | No |
| 17 | PT/H / 5.3.4 Contrato de SIM M2M y servicio satelital de los camiones con frío |  | 10d | 2027-03-01 | 2027-03-12 | 1SS | 12 | No |
| 18 | PT/H / 7.2.3 Diagnóstico del impacto organizacional por área y perfil, con agentes de cambio |  | 60d | 2027-03-01 | 2027-05-25 |  | 45 | No |
| 19 | PT/H / 5.1.2 Especificación y compra de la sala técnica, los racks, los servidores y los gabinetes de borde |  | 7d | 2027-03-02 | 2027-03-10 | 7 | 14 | No |
| 20 | PT/H / H1 — entrega del expediente | milestone | 0d | 2027-03-09 | 2027-03-09 | 3FS-1d, 9FS-1d |  | No |
| 21 | PT/H / H1 — acta del CLIENTE (límite: mes 2) | milestone | 0d | 2027-03-23 | 2027-03-23 | 20FS+10d | 5 | No |
| 22 | RC / 2.4.3 Validación del diseño del kit en banco de pruebas |  | 22d | 2027-04-01 | 2027-04-30 | 1, 17 | 0 | Sí |
| 23 | PT/H / 1.7.1 Plan de Reversibilidad inicial (primeros 90 días) |  | 7d | 2027-04-01 | 2027-04-09 |  | 15 | No |
| 24 | PT/H / 2.2.2 Modelado de amenazas por componente y por integración externa, actualizado ante cada cambio |  | 167d | 2027-04-01 | 2027-11-30 |  |  | No |
| 25 | PT/H / 2.2.3 Plan de respuesta a incidentes de seguridad, con aviso al CLIENTE en dos horas |  | 12d | 2027-04-01 | 2027-04-16 |  | 1 | No |
| 26 | PT/H / 2 elementos: 2.5.1, 2.5.2 |  | 21d | 2027-04-01 | 2027-04-29 |  | 1 | No |
| 27 | PT/H / 2.6.2 Prototipos y pruebas de usabilidad con participantes del CLIENTE |  | 21d | 2027-04-01 | 2027-04-29 |  | 1 | No |
| 28 | PT/H / 2 elementos: 3.10.2.2, 3.10.3.1 |  | 49d | 2027-04-01 | 2027-06-09 |  | 13 | No |
| 29 | PT/H / 4 elementos: 6.1.1, 6.1.2, 6.1.3, 6.1.4 |  | 14d | 2027-04-01 | 2027-04-20 | 19 | 8 | No |
| 30 | PT/H / 2.4.1 Acta de aprobación de la arquitectura, el plan de seguridad y el modelo de datos (H2) |  | 9d | 2027-04-19 | 2027-04-29 | 11, 12, 13, 25 | 1 | No |
| 31 | PT/H / H2 — entrega del expediente | milestone | 0d | 2027-04-29 | 2027-04-29 | 30FS-1d |  | No |
| 32 | RC / 2.6.3 Indicadores de usabilidad comprometidos por transacción crítica |  | 20d | 2027-05-03 | 2027-05-31 |  | 0 | Sí |
| 33 | RC / 3.1.4 Cadena de integración y entrega continua, e infraestructura como código |  | 20d | 2027-05-03 | 2027-05-31 |  | 0 | Sí |
| 34 | RC / 4 elementos: 3.2.1, 3.2.2, 3.2.4, 3.2.5 |  | 20d | 2027-05-03 | 2027-05-31 | 16 | 0 | Sí |
| 35 | RC / 3.2.3 Servicio de nube de ingesta de IoT, telemetría cruda y plataforma analítica |  | 20d | 2027-05-03 | 2027-05-31 | 16 | 0 | Sí |
| 36 | RC / 6.1.5 Acta de recepción técnica de la sala |  | 14d | 2027-05-03 | 2027-05-20 | 19, 29 | 0 | Sí |
| 37 | PT/H / 2.4.4 Mapeo térmico por tipo de carrocería |  | 19d | 2027-05-03 | 2027-05-28 | 22 | 1 | No |
| 38 | PT/H / 2 elementos: 3.11.3, 3.11.4 |  | 355d | 2027-05-03 | 2028-09-29 |  |  | No |
| 39 | PT/H / 5 elementos: 5.2.2, 5.2.3, 5.3.1, 5.3.2, 5.3.3 |  | 7d | 2027-05-03 | 2027-05-11 |  | 13 | No |
| 40 | PT/H / 6.2.1 Cableado de cobre Cat6A y fibra OM4 tendido, con dos ductos de ingreso independientes |  | 14d | 2027-05-03 | 2027-05-20 |  | 6 | No |
| 41 | PT/H / 6.3.3 Gabinete de borde de Concepción montado: servidores activo y en espera, firewalls, switches, UPS, climatización y monitoreo |  | 14d | 2027-05-03 | 2027-05-20 |  | 6 | No |
| 42 | PT/H / H2 — acta del CLIENTE (límite: mes 4) | milestone | 0d | 2027-05-13 | 2027-05-13 | 31FS+10d | 11 | No |
| 43 | RC / 2 elementos: 6.3.1, 6.3.2 |  | 13d | 2027-05-24 | 2027-06-09 | 36 | 0 | Sí |
| 44 | PT/H / 3 elementos: 3.1.1, 3.1.2, 3.1.3 |  | 14d | 2027-06-01 | 2027-06-18 | 34 | 6 | No |
| 45 | PT/H / 3.1.5 Observabilidad de los doce módulos y de los sitios, con tableros para el CLIENTE (H3) |  | 14d | 2027-06-01 | 2027-06-18 |  | 6 | No |
| 46 | PT/H / 3.2.6 Servicio de gestión de dispositivos móviles |  | 19d | 2027-06-01 | 2027-06-29 | 16 | 1 | No |
| 47 | PT/H / 3.3.1 Identidad y control de acceso, incluidos los conductores externos que rotan sin aviso |  | 45d | 2027-06-01 | 2027-08-05 | 13 | 10 | No |
| 48 | PT/H / 3.3.2 Integración con el ERP como único emisor de la guía de despacho (INT-06 e INT-07) |  | 21d | 2027-06-01 | 2027-07-01 | 5 | 10 | No |
| 49 | PT/H / 3.3.3 Convivencia con el WMS de 2013 durante el reemplazo |  | 25d | 2027-06-01 | 2027-07-07 |  | 10 | No |
| 50 | PT/H / 3.3.5 Registro auditable de stock, lotes y cobros |  | 43d | 2027-06-01 | 2027-08-03 |  | 10 | No |
| 51 | PT/H / 3.10.2.3 Innovación 2: captura de evidencia en las aplicaciones de preventa, preparación y reparto (INN-02.P3) |  | 90d | 2027-06-01 | 2027-10-08 |  | 35 | No |
| 52 | PT/H / 5.1.3 Actas de recepción técnica del equipamiento de terreno comprado por el CLIENTE y de la infraestructura provista por LafroX |  | 7d | 2027-06-01 | 2027-06-09 |  | 13 | No |
| 53 | PT/H / 6.4.1 Hardware de control de acceso biométrico y esclusa instalado |  | 14d | 2027-06-01 | 2027-06-18 |  | 6 | No |
| 54 | PT/H / 3.3.6 Operación sin conexión: 14 horas en terreno y 24 horas en el CD |  | 39d | 2027-06-07 | 2027-08-03 |  | 6 | No |
| 55 | PT/H / 3.10.3.2 Innovación 3: asociación lote–sensor en el borde y en el camión (INN-03.P2) |  | 72d | 2027-06-07 | 2027-09-20 |  | 28 | No |
| 56 | PT/H / 6.4.2 Hardware de videovigilancia instalado |  | 13d | 2027-06-07 | 2027-06-24 |  | 3 | No |
| 57 | RC / 2 elementos: 6.6.1, 6.6.2 |  | 13d | 2027-06-10 | 2027-06-30 | 41, 43 | 0 | Sí |
| 58 | PT/H / 3.3.4 Integración con la telemetría de los 42 camiones propios (INT-15) |  | 21d | 2027-06-10 | 2027-07-12 |  | 3 | No |
| 59 | PT/H / 3.4.1 Recepción de mercadería con captura de lote y vencimiento (M1 Recepción) |  | 41d | 2027-06-10 | 2027-08-10 | 27, 30, 33FF, 42, 44FF, 45FF, 47SS, 48SS, 49SS, 50SS, 54SS, 58SS | 3 | No |
| 60 | PT/H / 3.4.2 Inventario por ubicación y lote, con FEFO y conteo cíclico (M2 Inventario) |  | 42d | 2027-06-10 | 2027-08-11 | 27, 30, 33FF, 42, 44FF, 45FF, 47SS, 48SS, 49SS, 50SS, 54SS, 58SS | 3 | No |
| 61 | PT/H / 3.4.10 Cobro en ruta, rendición y conciliación (M7 Cobranza y rendición) |  | 79d | 2027-06-10 | 2027-10-04 | 27, 30, 33FF, 42, 44FF, 45FF, 47SS, 48SS, 49SS, 50SS, 54SS, 58SS, 68FF+2d | 5 | No |
| 62 | PT/H / 6.6.3 Borde de los CD en servicio, con la prueba de autonomía de 24 horas aprobada |  | 7d | 2027-06-10 | 2027-06-18 | 41, 43 | 6 | No |
| 63 | PT/H / 3.4.3 Preparación de pedidos en el turno de noche y en la cámara de congelado (M5 Preparación) |  | 45d | 2027-06-14 | 2027-08-18 | 27, 30, 33FF, 42, 44FF, 45FF, 47SS, 48SS, 49SS, 50SS, 54SS, 58SS, 59FF+2d, 60FF+2d | 7 | No |
| 64 | PT/H / 3.4.4 Cadena de frío, retención por SSCC y retiro sanitario (M9 Calidad y trazabilidad) |  | 74d | 2027-06-14 | 2027-09-29 | 22, 27, 30, 33FF, 37, 42, 44FF, 45FF, 47SS, 48SS, 49SS, 50SS, 54SS, 58SS, 59FF+2d, 60FF+2d | 1 | No |
| 65 | PT/H / 3.4.5 Ingesta de temperatura (M9) y posición de flota (M12) |  | 53d | 2027-06-14 | 2027-08-30 | 22, 27, 30, 33FF, 35, 37, 42, 44FF, 45FF, 47SS, 48SS, 49SS, 50SS, 54SS, 58SS | 1 | No |
| 66 | PT/H / 3.4.6 Aplicación móvil de preventa sin conexión, con stock y crédito (M3 Preventa) |  | 42d | 2027-06-16 | 2027-08-17 | 27, 30, 33FF, 42, 44FF, 45FF, 47SS, 48SS, 49SS, 50SS, 54SS, 58SS, 60SS | 5 | No |
| 67 | PT/H / 3.4.7 Planificación de rutas corregible por el planificador (M4 Rutas) |  | 58d | 2027-06-16 | 2027-09-08 | 4, 27, 30, 33FF, 42, 44FF, 45FF, 47SS, 48SS, 49SS, 50SS, 54SS, 58SS, 63FF+2d, 66FF+2d | 15 | No |
| 68 | PT/H / 3.4.8 Aplicación móvil de reparto con prueba de entrega digital (M6 Reparto) |  | 59d | 2027-06-16 | 2027-09-09 | 27, 30, 33FF, 42, 44FF, 45FF, 47SS, 48SS, 49SS, 50SS, 54SS, 58SS, 63FF+2d, 66FF+2d | 5 | No |
| 69 | RC / 3.4.9 Devoluciones en terreno y control de envases (M8 Devoluciones y envases) |  | 71d | 2027-06-18 | 2027-09-30 | 27, 30, 33FF, 42, 44FF, 45FF, 47SS, 48SS, 49SS, 50SS, 54SS, 58SS | 0 | Sí |
| 70 | PT/H / H3 — entrega del expediente | milestone | 0d | 2027-06-18 | 2027-06-18 | 44FS-1d, 45FS-1d, 62FS-1d |  | No |

Notes:
- 1: 5.1.4 Especificación y compra del sistema de cadena de frío / Mismas fechas, duración y dependencias que los elementos originales. Identificadores de origen: 188
- 2: 1.1.1 Acta de constitución del proyecto, firmada con la Contraparte Técnica / 1.1.2 Documento de validación con el CLIENTE de los problemas y metas del proyecto / 1.1.3 Acta de confirmación con el CLIENTE de la fecha de inicio, la evidencia para el proveedor de lácteos, las ventanas de paso a producción y el acuse tributario / 1.4.1 Registro de interesados con su influencia, interés y estrategia / 1.4.2 Plan de comunicaciones con calendario y canales por grupo de interés / 1.9.1 Matriz de cumplimiento normativo por obligación legal, con su control y su evidencia / 1.9.2 Acuerdo de tratamiento de datos personales con el CLIENTE / Mismas fechas, duración y dependencias que los elementos originales. Identificadores de origen: 3, 4, 5, 19, 20, 41, 42
- 3: 1.2.1 Documento de especificación de requerimientos y línea base de alcance de la Etapa 1 (H1) / Mismas fechas, duración y dependencias que los elementos originales. Identificadores de origen: 7
- 4: 1.2.2 Documento de reglas de ruteo capturadas al planificador de rutas / Mismas fechas, duración y dependencias que los elementos originales. Identificadores de origen: 8
- 5: 1.2.3 Documento de especificación de las interfaces sin documentación del ERP, del WMS de 2013 y de la telemetría del tercero / Mismas fechas, duración y dependencias que los elementos originales. Identificadores de origen: 9
- 6: 1.3.5 Reunión semanal de seguimiento con su informe semanal / 1.6.2 Registro de riesgos revisado en cada Comité de Proyecto / 1.8.1 Oficina de gestión del proyecto con metodología basada en el PMBOK / 1.8.3 Actas del Comité de Proyecto quincenal / 1.8.6 Informe mensual de avance con valor ganado / Mismas fechas, duración y dependencias que los elementos originales. Identificadores de origen: 17, 27, 32, 34, 37
- 7: 2.3.1 Plano de la sala técnica de Talca, con su cálculo eléctrico y térmico / 2.3.2 Plano de distribución de los racks R01 de servidores y R02 de comunicaciones / Mismas fechas, duración y dependencias que los elementos originales. Identificadores de origen: 58, 59
- 8: 1.3.1 Plan para la dirección del proyecto, con el calendario de congelamientos de septiembre, diciembre y el cierre mensual / Mismas fechas, duración y dependencias que los elementos originales. Identificadores de origen: 13
- 9: 1.2.4 Matriz de trazabilidad: requerimiento, módulo, paquete y prueba (H1) / Mismas fechas, duración y dependencias que los elementos originales. Identificadores de origen: 10
- 10: 1.3.2 EDT y diccionario de la EDT (línea base del alcance) / 1.3.3 Carta Gantt de 56 meses con los hitos H1 a H12 y la ruta crítica / 1.3.4 Documento de nivelación de recursos y frentes del solapamiento de los meses 13 a 15 y 19 a 20 / 1.5.1 Plan de calidad y plan de pruebas / 1.6.1 Plan de riesgos y registro inicial de riesgos según ISO 31000 / 1.9.3 Registro de actividades de tratamiento y evaluación de impacto en protección de datos / 5.1.1 Especificación de compra de equipos de uso para el CLIENTE / Mismas fechas, duración y dependencias que los elementos originales. Identificadores de origen: 14, 15, 16, 23, 26, 43, 185
- 11: 2.1.1 Documento de arquitectura lógica: capas, módulos M1 a M12 e interfaces / Mismas fechas, duración y dependencias que los elementos originales. Identificadores de origen: 48
- 12: 2.1.2 Documento de arquitectura física híbrida: nube, centros de distribución y plataformas de cross-docking / 2.1.3 Modelo de datos y diccionario de datos, con la trazabilidad por lote / 2.2.4 Matriz de clasificación de la información y matriz de controles / Mismas fechas, duración y dependencias que los elementos originales. Identificadores de origen: 49, 50, 56
- 13: 2.2.1 Plan de seguridad de la información / Mismas fechas, duración y dependencias que los elementos originales. Identificadores de origen: 53
- 14: 2.3.3 Plano de los gabinetes de borde de Concepción y de las plataformas de cross-docking / 2.6.1 Investigación con preparadores, preventistas, conductores y almaceneros / Mismas fechas, duración y dependencias que los elementos originales. Identificadores de origen: 60, 70
- 15: 3.10.2.1 Innovación 2: informe de medición inicial y contrato de evidencia (INN-02.P1) / Mismas fechas, duración y dependencias que los elementos originales. Identificadores de origen: 148
- 16: 5.2.1 Contrato de los servicios de AWS / Mismas fechas, duración y dependencias que los elementos originales. Identificadores de origen: 190
- 17: 5.3.4 Contrato de SIM M2M y servicio satelital de los camiones con frío / Mismas fechas, duración y dependencias que los elementos originales. Identificadores de origen: 197
- 18: 7.2.3 Diagnóstico del impacto organizacional por área y perfil, con agentes de cambio / Mismas fechas, duración y dependencias que los elementos originales. Identificadores de origen: 245
- 19: 5.1.2 Especificación y compra de la sala técnica, los racks, los servidores y los gabinetes de borde / Mismas fechas, duración y dependencias que los elementos originales. Identificadores de origen: 186
- 20: H1 — entrega del expediente / Mismas fechas, duración y dependencias que los elementos originales. Identificadores de origen: 291
- 21: H1 — acta del CLIENTE (límite: mes 2) / Mismas fechas, duración y dependencias que los elementos originales. Identificadores de origen: 292
- 22: 2.4.3 Validación del diseño del kit en banco de pruebas / Mismas fechas, duración y dependencias que los elementos originales. Identificadores de origen: 64
- 23: 1.7.1 Plan de Reversibilidad inicial (primeros 90 días) / Mismas fechas, duración y dependencias que los elementos originales. Identificadores de origen: 29
- 24: 2.2.2 Modelado de amenazas por componente y por integración externa, actualizado ante cada cambio / Mismas fechas, duración y dependencias que los elementos originales. Identificadores de origen: 54
- 25: 2.2.3 Plan de respuesta a incidentes de seguridad, con aviso al CLIENTE en dos horas / Mismas fechas, duración y dependencias que los elementos originales. Identificadores de origen: 55
- 26: 2.5.1 Plan de continuidad del negocio según ISO 22301, con análisis de impacto y procedimientos manuales / 2.5.2 Plan de continuidad TIC según ISO/IEC 27031 y plan de recuperación ante desastres / Mismas fechas, duración y dependencias que los elementos originales. Identificadores de origen: 67, 68
- 27: 2.6.2 Prototipos y pruebas de usabilidad con participantes del CLIENTE / Mismas fechas, duración y dependencias que los elementos originales. Identificadores de origen: 71
- 28: 3.10.2.2 Innovación 2: circuito mínimo de reproducción en la preventa (INN-02.P2) / 3.10.3.1 Innovación 3: documento de familias priorizadas y parámetros aprobados (INN-03.P1) / Mismas fechas, duración y dependencias que los elementos originales. Identificadores de origen: 149, 153
- 29: 6.1.1 Coordinación de la obra civil de separación, a cargo del CLIENTE (RT-06.06), y piso técnico de la sala / 6.1.2 Hardware de energía instalado: UPS modular N+1, generador con 24 horas de autonomía, transferencia automática y PDU A/B / 6.1.3 Hardware de climatización de precisión N+1 instalado / 6.1.4 Hardware de detección temprana de incendio y extinción por agente limpio instalado / Mismas fechas, duración y dependencias que los elementos originales. Identificadores de origen: 205, 206, 207, 208
- 30: 2.4.1 Acta de aprobación de la arquitectura, el plan de seguridad y el modelo de datos (H2) / Mismas fechas, duración y dependencias que los elementos originales. Identificadores de origen: 62
- 31: H2 — entrega del expediente / Mismas fechas, duración y dependencias que los elementos originales. Identificadores de origen: 293
- 32: 2.6.3 Indicadores de usabilidad comprometidos por transacción crítica / Mismas fechas, duración y dependencias que los elementos originales. Identificadores de origen: 72
- 33: 3.1.4 Cadena de integración y entrega continua, e infraestructura como código / Mismas fechas, duración y dependencias que los elementos originales. Identificadores de origen: 78
- 34: 3.2.1 Servicio de nube para la aplicación y los portales / 3.2.2 Servicio de nube de base de datos, caché y mensajería / 3.2.4 Servicio de nube de respaldo inmutable y réplica entre regiones / 3.2.5 Servicio de nube de seguridad y gobierno, y detección en endpoints / Mismas fechas, duración y dependencias que los elementos originales. Identificadores de origen: 81, 82, 84, 85
- 35: 3.2.3 Servicio de nube de ingesta de IoT, telemetría cruda y plataforma analítica / Mismas fechas, duración y dependencias que los elementos originales. Identificadores de origen: 83
- 36: 6.1.5 Acta de recepción técnica de la sala / Mismas fechas, duración y dependencias que los elementos originales. Identificadores de origen: 209
- 37: 2.4.4 Mapeo térmico por tipo de carrocería / Mismas fechas, duración y dependencias que los elementos originales. Identificadores de origen: 65
- 38: 3.11.3 Estándares de codificación y documentación de interfaces en OpenAPI y AsyncAPI / 3.11.4 Inventario de componentes (SBOM) con sus licencias de código abierto / Mismas fechas, duración y dependencias que los elementos originales. Identificadores de origen: 165, 166
- 39: 5.2.2 Suscripción del servicio de gestión de dispositivos y de detección en endpoints / 5.2.3 Licencias de software de terceros constituidas a nombre del CLIENTE / 5.3.1 Contrato de fibra óptica de los CD de Talca y Concepción / 5.3.2 Contrato de planes LTE con dos proveedores (ocho planes) / 5.3.3 Contrato de Starlink para los cinco sitios: Talca, Concepción y las tres plataformas de cross-docking / Mismas fechas, duración y dependencias que los elementos originales. Identificadores de origen: 191, 192, 194, 195, 196
- 40: 6.2.1 Cableado de cobre Cat6A y fibra OM4 tendido, con dos ductos de ingreso independientes / Mismas fechas, duración y dependencias que los elementos originales. Identificadores de origen: 211
- 41: 6.3.3 Gabinete de borde de Concepción montado: servidores activo y en espera, firewalls, switches, UPS, climatización y monitoreo / Mismas fechas, duración y dependencias que los elementos originales. Identificadores de origen: 217
- 42: H2 — acta del CLIENTE (límite: mes 4) / Mismas fechas, duración y dependencias que los elementos originales. Identificadores de origen: 294
- 43: 6.3.1 Rack R01 de servidores montado: clúster de tres nodos, respaldo local, consola KVM y traslado del servidor del ERP del CLIENTE / 6.3.2 Rack R02 de comunicaciones montado: firewalls, switches de núcleo y de gestión, y distribución de fibra / Mismas fechas, duración y dependencias que los elementos originales. Identificadores de origen: 215, 216
- 44: 3.1.1 Ambientes de Desarrollo y QA en la nube (H3) / 3.1.2 Ambientes de Preproducción y Producción en la nube (H3) / 3.1.3 Ambiente de recuperación ante desastres en la región secundaria (H3) / Mismas fechas, duración y dependencias que los elementos originales. Identificadores de origen: 75, 76, 77
- 45: 3.1.5 Observabilidad de los doce módulos y de los sitios, con tableros para el CLIENTE (H3) / Mismas fechas, duración y dependencias que los elementos originales. Identificadores de origen: 79
- 46: 3.2.6 Servicio de gestión de dispositivos móviles / Mismas fechas, duración y dependencias que los elementos originales. Identificadores de origen: 86
- 47: 3.3.1 Identidad y control de acceso, incluidos los conductores externos que rotan sin aviso / Mismas fechas, duración y dependencias que los elementos originales. Identificadores de origen: 88
- 48: 3.3.2 Integración con el ERP como único emisor de la guía de despacho (INT-06 e INT-07) / Mismas fechas, duración y dependencias que los elementos originales. Identificadores de origen: 89
- 49: 3.3.3 Convivencia con el WMS de 2013 durante el reemplazo / Mismas fechas, duración y dependencias que los elementos originales. Identificadores de origen: 90
- 50: 3.3.5 Registro auditable de stock, lotes y cobros / Mismas fechas, duración y dependencias que los elementos originales. Identificadores de origen: 92
- 51: 3.10.2.3 Innovación 2: captura de evidencia en las aplicaciones de preventa, preparación y reparto (INN-02.P3) / Mismas fechas, duración y dependencias que los elementos originales. Identificadores de origen: 150
- 52: 5.1.3 Actas de recepción técnica del equipamiento de terreno comprado por el CLIENTE y de la infraestructura provista por LafroX / Mismas fechas, duración y dependencias que los elementos originales. Identificadores de origen: 187
- 53: 6.4.1 Hardware de control de acceso biométrico y esclusa instalado / Mismas fechas, duración y dependencias que los elementos originales. Identificadores de origen: 220
- 54: 3.3.6 Operación sin conexión: 14 horas en terreno y 24 horas en el CD / Mismas fechas, duración y dependencias que los elementos originales. Identificadores de origen: 93
- 55: 3.10.3.2 Innovación 3: asociación lote–sensor en el borde y en el camión (INN-03.P2) / Mismas fechas, duración y dependencias que los elementos originales. Identificadores de origen: 154
- 56: 6.4.2 Hardware de videovigilancia instalado / Mismas fechas, duración y dependencias que los elementos originales. Identificadores de origen: 221
- 57: 6.6.1 Software de base instalado en los sitios: virtualización, contenedores, PostgreSQL, RabbitMQ y Keycloak / 6.6.2 Enlaces de fibra, LTE y Starlink habilitados, con conmutación al respaldo / Mismas fechas, duración y dependencias que los elementos originales. Identificadores de origen: 231, 232
- 58: 3.3.4 Integración con la telemetría de los 42 camiones propios (INT-15) / Mismas fechas, duración y dependencias que los elementos originales. Identificadores de origen: 91
- 59: 3.4.1 Recepción de mercadería con captura de lote y vencimiento (M1 Recepción) / Mismas fechas, duración y dependencias que los elementos originales. Identificadores de origen: 95
- 60: 3.4.2 Inventario por ubicación y lote, con FEFO y conteo cíclico (M2 Inventario) / Mismas fechas, duración y dependencias que los elementos originales. Identificadores de origen: 96
- 61: 3.4.10 Cobro en ruta, rendición y conciliación (M7 Cobranza y rendición) / Mismas fechas, duración y dependencias que los elementos originales. Identificadores de origen: 104
- 62: 6.6.3 Borde de los CD en servicio, con la prueba de autonomía de 24 horas aprobada / Mismas fechas, duración y dependencias que los elementos originales. Identificadores de origen: 233
- 63: 3.4.3 Preparación de pedidos en el turno de noche y en la cámara de congelado (M5 Preparación) / Mismas fechas, duración y dependencias que los elementos originales. Identificadores de origen: 97
- 64: 3.4.4 Cadena de frío, retención por SSCC y retiro sanitario (M9 Calidad y trazabilidad) / Mismas fechas, duración y dependencias que los elementos originales. Identificadores de origen: 98
- 65: 3.4.5 Ingesta de temperatura (M9) y posición de flota (M12) / Mismas fechas, duración y dependencias que los elementos originales. Identificadores de origen: 99
- 66: 3.4.6 Aplicación móvil de preventa sin conexión, con stock y crédito (M3 Preventa) / Mismas fechas, duración y dependencias que los elementos originales. Identificadores de origen: 100
- 67: 3.4.7 Planificación de rutas corregible por el planificador (M4 Rutas) / Mismas fechas, duración y dependencias que los elementos originales. Identificadores de origen: 101
- 68: 3.4.8 Aplicación móvil de reparto con prueba de entrega digital (M6 Reparto) / Mismas fechas, duración y dependencias que los elementos originales. Identificadores de origen: 102
- 69: 3.4.9 Devoluciones en terreno y control de envases (M8 Devoluciones y envases) / Mismas fechas, duración y dependencias que los elementos originales. Identificadores de origen: 103
- 70: H3 — entrega del expediente / Mismas fechas, duración y dependencias que los elementos originales. Identificadores de origen: 295

| ID | Task | Type | Duration | Start | Finish | Predecessors | Holgura (días hábiles) | Crítica |
| --- | --- | --- | --- | --- | --- | --- | --- | --- |
| 71 | PT/H / 6.4.3 Recinto de custodia de respaldos habilitado |  | 13d | 2027-06-22 | 2027-07-09 |  | 14 | No |
| 72 | PT/H / 2 elementos: 1.5.2, 3.11.5 |  | 315d | 2027-07-01 | 2028-09-29 |  |  | No |
| 73 | PT/H / 3 elementos: 3.6.2, 3.6.3, 3.6.4 |  | 22d | 2027-07-01 | 2027-08-02 |  | 21 | No |
| 74 | PT/H / 6.2.2 Certificación de enlaces, etiquetado y planos as-built |  | 13d | 2027-07-01 | 2027-07-20 |  | 8 | No |
| 75 | PT/H / H3 — acta del CLIENTE (límite: mes 6) | milestone | 0d | 2027-07-06 | 2027-07-06 | 70FS+10d | 17 | No |
| 76 | PT/H / 3.6.1 Intercambio de lote y trazabilidad con los proveedores |  | 23d | 2027-08-02 | 2027-09-01 |  | 20 | No |
| 77 | PT/H / 3.10.1.1 Innovación 1: documento de catálogo de acciones y protocolo del piloto (INN-01.P1) |  | 49d | 2027-08-02 | 2027-10-08 |  | 14 | No |
| 78 | PT/H / 5.4.4 Contrato de custodia de fuentes con un tercero independiente |  | 7d | 2027-08-02 | 2027-08-10 |  | 15 | No |
| 79 | PT/H / 6.2.3 Gabinetes de piso y switches de acceso instalados en las bodegas de Talca y Concepción |  | 14d | 2027-08-02 | 2027-08-19 |  | 8 | No |
| 80 | PT/H / 3.7.1 Informe de perfilamiento y datos saneados |  | 42d | 2027-08-04 | 2027-10-01 |  | 19 | No |
| 81 | PT/H / 6.5.4 Kit de cadena de frío instalado y recibido en los 28 camiones con frío |  | 94d | 2027-09-01 | 2028-01-14 | 1, 22, 37 | 11 | No |
| 82 | PT/H / 7.2.4 Procedimientos operativos rediseñados, contingencia de frío y ruptura confirmada |  | 272d | 2027-09-01 | 2028-09-29 |  |  | No |
| 83 | PT/H / 3.4.11 Indicadores operacionales y OTIF diario (M10 Analítica) |  | 17d | 2027-09-02 | 2027-09-27 | 27, 30, 33FF, 42, 44FF, 45FF, 47SS, 48SS, 49SS, 50SS, 54SS, 58SS | 3 | No |
| 84 | PT/H / Cuatro kits de frío recibidos para el piloto | milestone | 0d | 2027-09-30 | 2027-09-30 | 81SS |  | No |
| 85 | PT/H / 3 elementos: 3.10.1.2, 3.10.1.3, 3.10.3.3 |  | 34d | 2027-10-01 | 2027-11-19 |  | 7 | No |
| 86 | PT/H / 2 elementos: 5.4.1, 5.4.2 |  | 7d | 2027-10-01 | 2027-10-12 |  | 77 | No |
| 87 | PT/H / 6.3.4 Gabinetes de borde montados en Curicó, Chillán y Los Ángeles, con dos mini-PC (activo y en espera) por plataforma |  | 13d | 2027-10-01 | 2027-10-20 |  | 7 | No |
| 88 | PT/H / 3.7.2 Datos maestros cargados: 8.400 SKU, clientes e instalaciones |  | 21d | 2027-10-04 | 2027-11-03 |  | 19 | No |
| 89 | PT/H / 3.8.1 Pruebas de integración, regresión e idempotencia en QA (H4) |  | 13d | 2027-10-05 | 2027-10-22 | 59, 60, 61, 63, 64, 65, 66, 67, 68, 69, 73, 76, 83 | 5 | No |
| 90 | PT/H / 6.5.1 Terminales de preventa, reparto y bodega configurados y enrolados |  | 70d | 2027-10-06 | 2028-01-14 | 46 | 11 | No |
| 91 | PT/H / 6.5.3 Sensores de cámara y gateways IoT instalados en Talca y Concepción |  | 35d | 2027-10-06 | 2027-11-25 |  | 25 | No |
| 92 | PT/H / 6.5.6 Impresoras de andén y balanzas de recepción instaladas |  | 70d | 2027-10-06 | 2028-01-14 |  | 11 | No |
| 93 | PT/H / H4 — entrega del expediente | milestone | 0d | 2027-10-22 | 2027-10-22 | 89FS-1d |  | No |
| 94 | PT/H / 2 elementos: 3.8.2, 3.8.3 |  | 19d | 2027-10-25 | 2027-11-19 | 89 | 7 | No |
| 95 | PT/H / 4 elementos: 3.8.4, 3.8.5, 3.8.6, 3.8.8 |  | 13d | 2027-10-25 | 2027-11-11 | 89 | 13 | No |
| 96 | PT/H / 3.11.2 Base de conocimiento de incidentes y decisiones de diseño |  | 231d | 2027-11-02 | 2028-09-29 |  |  | No |
| 97 | PT/H / 4.1.1 Plan de olas de la Etapa 1 por sitio y zona: Talca, Concepción y plataformas de cross-docking |  | 7d | 2027-11-02 | 2027-11-10 |  | 14 | No |
| 98 | PT/H / 2 elementos: 7.1.1, 7.1.6 |  | 38d | 2027-11-02 | 2027-12-24 |  | 26 | No |
| 99 | PT/H / 7.1.5 Materiales de capacitación: manuales por perfil, guías rápidas, preguntas frecuentes y videos tutoriales |  | 190d | 2027-11-02 | 2028-07-31 |  |  | No |
| 100 | PT/H / 7.2.1 Acompañamiento del personal con 20 o 30 años en la compañía |  | 149d | 2027-11-02 | 2028-05-31 |  |  | No |
| 101 | PT/H / 2 elementos: 6.5.2, 6.5.5 |  | 51d | 2027-11-04 | 2028-01-14 |  | 11 | No |
| 102 | PT/H / H4 — acta del CLIENTE (límite: mes 10) | milestone | 0d | 2027-11-08 | 2027-11-08 | 93FS+10d | 16 | No |
| 103 | PT/H / 4.1.4 Piloto de cadena de frío en cuatro camiones |  | 29d | 2027-11-09 | 2027-12-20 | 17, 22, 37, 64, 65, 84, 89, 102 | 9 | No |
| 104 | PT/H / 3.8.7 Acta de certificación de la Etapa 1 (H5) |  | 8d | 2027-11-22 | 2027-12-01 | 94, 95 | 21 | No |
| 105 | RC / 2 elementos: 3.7.3, 3.7.4 |  | 22d | 2027-12-01 | 2027-12-31 |  | 0 | Sí |
| 106 | PT/H / 3 elementos: 3.10.1.4, 3.10.2.4, 3.10.3.4 |  | 78d | 2027-12-01 | 2028-03-20 |  | 28 | No |
| 107 | PT/H / 4.1.2 Procedimiento de reversión de la Etapa 1 antes de las 05:30, con versión operativa local y DTE emitidos por el ERP |  | 7d | 2027-12-01 | 2027-12-10 |  | 15 | No |
| 108 | PT/H / 7.1.3 Incorporación de conductores de transportistas, escaneos y lectura del rojo |  | 210d | 2027-12-01 | 2028-09-29 |  |  | No |
| 109 | PT/H / H5 — entrega del expediente | milestone | 0d | 2027-12-01 | 2027-12-01 | 104FS-1d |  | No |
| 110 | PT/H / 3.7.5 Acta de conciliación y corte fuera de las ventanas de congelamiento |  | 19d | 2028-01-03 | 2028-01-27 | 80FF+3d, 88FF+3d, 105FF+3d | 2 | No |
| 111 | PT/H / H5 — acta del CLIENTE (límite: mes 12) | milestone | 0d | 2028-01-03 | 2028-01-03 | 109FS+10d | 20 | No |
| 112 | RC / H6 — inicio de marcha blanca (mes 13) | milestone | 0d | 2028-02-01 | 2028-02-01 | 117SS | 0 | Sí |
| 113 | PT/H / 1.2.5 Documento de línea base de alcance de la Etapa 2: canal moderno y costo de servir (H8) |  | 7d | 2028-02-01 | 2028-02-09 |  | 6 | No |
| 114 | PT/H / 2.1.4 Documento de diseño detallado de M11 y del intercambio con las cadenas |  | 12d | 2028-02-01 | 2028-02-16 |  | 1 | No |
| 115 | PT/H / 3.6.5 Intercambio electrónico con la principal cadena, con sus pruebas aprobadas (INT-08) |  | 107d | 2028-02-01 | 2028-07-04 |  | 19 | No |
| 116 | PT/H / 3.10.4.1 Innovación 5: prototipo e informe de la prueba de comprensión (INN-05.P1) |  | 36d | 2028-02-01 | 2028-03-21 |  | 8 | No |
| 117 | PT/H / 4.2.1 Marcha blanca de la Etapa 1 con conciliación diaria (H6) |  | 63d | 2028-02-01 | 2028-04-28 | 97, 107, 110, 111 |  | No |
| 118 | PT/H / 7.2.5 Medición de la adopción y plan de acción correctiva |  | 187d | 2028-02-01 | 2028-10-31 |  |  | No |
| 119 | PT/H / 7.3.1 Certificación de preventistas, conductores y preparadores (Etapa 1) |  | 39d | 2028-02-01 | 2028-03-24 |  | 24 | No |
| 120 | PT/H / 2.4.2 Acta de aprobación del diseño detallado de la Etapa 2 (H8) |  | 8d | 2028-02-17 | 2028-02-28 | 113, 114 | 1 | No |
| 121 | PT/H / H8 — entrega del expediente | milestone | 0d | 2028-02-28 | 2028-02-28 | 113FS-1d, 120FS-1d |  | No |
| 122 | PT/H / Inicio de la ola 3 de reparto | milestone | 0d | 2028-02-29 | 2028-02-29 | 81FS-1d, 86FS-1d, 103FS-1d |  | No |
| 123 | PT/H / 3.10.4.2 Innovación 5: evaluación de privacidad y diseño de la impresión en cabina (INN-05.P2) |  | 35d | 2028-03-01 | 2028-04-19 |  | 7 | No |
| 124 | PT/H / H8 — acta del CLIENTE (límite: mes 14) | milestone | 0d | 2028-03-13 | 2028-03-13 | 121FS+10d | 14 | No |
| 125 | RC / 4 elementos: 3.5.1, 3.5.2, 3.5.3, 3.5.4 |  | 32d | 2028-03-15 | 2028-04-28 | 113, 120, 124 | 0 | Sí |
| 126 | PT/H / 1.7.2 Primera actualización anual del Plan de Reversibilidad durante la implementación |  | 7d | 2028-04-03 | 2028-04-11 |  | 12 | No |
| 127 | PT/H / 3.10.4.3 Innovación 5: cálculo y bloques 1 a 3 de la hoja de negocio (INN-05.P3) |  | 48d | 2028-04-03 | 2028-06-09 |  | 13 | No |
| 128 | PT/H / 3.11.1 Documentación técnica, funcional, de arquitectura, de operación y de seguridad |  | 143d | 2028-04-03 | 2028-10-31 |  |  | No |
| 129 | PT/H / 7.1.4 Traspaso al equipo de TI de cuatro personas del CLIENTE |  | 123d | 2028-04-03 | 2028-09-29 |  |  | No |
| 130 | PT/H / 3.9.1 Pruebas de integración y regresión sin afectar la Etapa 1 en producción (H9) |  | 13d | 2028-05-02 | 2028-05-18 | 125 | 3 | No |
| 131 | PT/H / 4.2.2 Estabilización de la Etapa 1, acompañamiento en ruta y restauraciones de soporte puente |  | 104d | 2028-05-02 | 2028-09-29 |  |  | No |
| 132 | PT/H / 7.2.2 Gestión del cambio con las cadenas y los transportistas |  | 38d | 2028-05-02 | 2028-06-23 |  | 25 | No |
| 133 | PT/H / 4.2.3 Acta de paso a producción y cierre de la Etapa 1 (H7) |  | 7d | 2028-05-05 | 2028-05-15 | 117, 119 | 2 | No |
| 134 | PT/H / H7 — entrega del expediente | milestone | 0d | 2028-05-15 | 2028-05-15 | 133FS-1d |  | No |
| 135 | PT/H / H9 — entrega del expediente | milestone | 0d | 2028-05-18 | 2028-05-18 | 130FS-1d |  | No |
| 136 | PT/H / 3 elementos: 3.9.3, 3.9.4, 3.9.7 |  | 10d | 2028-05-19 | 2028-06-01 | 130 | 12 | No |
| 137 | PT/H / 3.9.5 Prueba de seguridad ofensiva de la Etapa 2, por un tercero independiente |  | 6d | 2028-05-19 | 2028-05-26 | 130 | 3 | No |
| 138 | RC / H7 — acta del CLIENTE (límite: mes 16) | milestone | 0d | 2028-05-29 | 2028-05-29 | 134FS+10d | 2 | Sí |
| 139 | PT/H / 3.6.6 Incorporación de las demás cadenas al intercambio electrónico (INT-08) |  | 57d | 2028-06-01 | 2028-08-23 |  | 6 | No |
| 140 | PT/H / 4.1.3 Plan de implantación y reversión de la Etapa 2 fuera de la ventana de 05:30 a 07:00 |  | 7d | 2028-06-01 | 2028-06-09 |  | 13 | No |

Notes:
- 71: 6.4.3 Recinto de custodia de respaldos habilitado / Mismas fechas, duración y dependencias que los elementos originales. Identificadores de origen: 222
- 72: 1.5.2 Puertas de calidad automáticas en la cadena de integración (cobertura unitaria global del 80 % y de lógica de negocio del 70 %) / 3.11.5 Depósito del código fuente en el repositorio del CLIENTE en cada liberación / Mismas fechas, duración y dependencias que los elementos originales. Identificadores de origen: 24, 167
- 73: 3.6.2 Integración con la pasarela de pago para el cobro con tarjeta (INT-09) / 3.6.3 Integración con el servicio de mapas y geocodificación (INT-10) / 3.6.4 Integración con el servicio de avisos al cliente (INT-11) / Mismas fechas, duración y dependencias que los elementos originales. Identificadores de origen: 113, 114, 115
- 74: 6.2.2 Certificación de enlaces, etiquetado y planos as-built / Mismas fechas, duración y dependencias que los elementos originales. Identificadores de origen: 212
- 75: H3 — acta del CLIENTE (límite: mes 6) / Mismas fechas, duración y dependencias que los elementos originales. Identificadores de origen: 296
- 76: 3.6.1 Intercambio de lote y trazabilidad con los proveedores / Mismas fechas, duración y dependencias que los elementos originales. Identificadores de origen: 112
- 77: 3.10.1.1 Innovación 1: documento de catálogo de acciones y protocolo del piloto (INN-01.P1) / Mismas fechas, duración y dependencias que los elementos originales. Identificadores de origen: 143
- 78: 5.4.4 Contrato de custodia de fuentes con un tercero independiente / Mismas fechas, duración y dependencias que los elementos originales. Identificadores de origen: 202
- 79: 6.2.3 Gabinetes de piso y switches de acceso instalados en las bodegas de Talca y Concepción / Mismas fechas, duración y dependencias que los elementos originales. Identificadores de origen: 213
- 80: 3.7.1 Informe de perfilamiento y datos saneados / Mismas fechas, duración y dependencias que los elementos originales. Identificadores de origen: 119
- 81: 6.5.4 Kit de cadena de frío instalado y recibido en los 28 camiones con frío / Mismas fechas, duración y dependencias que los elementos originales. Identificadores de origen: 227
- 82: 7.2.4 Procedimientos operativos rediseñados, contingencia de frío y ruptura confirmada / Mismas fechas, duración y dependencias que los elementos originales. Identificadores de origen: 246
- 83: 3.4.11 Indicadores operacionales y OTIF diario (M10 Analítica) / Mismas fechas, duración y dependencias que los elementos originales. Identificadores de origen: 105
- 84: Cuatro kits de frío recibidos para el piloto / Mismas fechas, duración y dependencias que los elementos originales. Identificadores de origen: 313
- 85: 3.10.1.2 Innovación 1: estimador de saldo y ritmo de reposición (INN-01.P2) / 3.10.1.3 Innovación 1: función de lista sin conexión en la aplicación de preventa (INN-01.P3) / 3.10.3.3 Innovación 3: vista en M9 y orden de salida sugerido (INN-03.P3) / Mismas fechas, duración y dependencias que los elementos originales. Identificadores de origen: 144, 145, 155
- 86: 5.4.1 Acuerdos operacionales firmados con los diez transportistas / 5.4.2 Acta de acuerdo con el sindicato sobre terminales, GPS y cámaras / Mismas fechas, duración y dependencias que los elementos originales. Identificadores de origen: 199, 200
- 87: 6.3.4 Gabinetes de borde montados en Curicó, Chillán y Los Ángeles, con dos mini-PC (activo y en espera) por plataforma / Mismas fechas, duración y dependencias que los elementos originales. Identificadores de origen: 218
- 88: 3.7.2 Datos maestros cargados: 8.400 SKU, clientes e instalaciones / Mismas fechas, duración y dependencias que los elementos originales. Identificadores de origen: 120
- 89: 3.8.1 Pruebas de integración, regresión e idempotencia en QA (H4) / Mismas fechas, duración y dependencias que los elementos originales. Identificadores de origen: 125
- 90: 6.5.1 Terminales de preventa, reparto y bodega configurados y enrolados / Mismas fechas, duración y dependencias que los elementos originales. Identificadores de origen: 224
- 91: 6.5.3 Sensores de cámara y gateways IoT instalados en Talca y Concepción / Mismas fechas, duración y dependencias que los elementos originales. Identificadores de origen: 226
- 92: 6.5.6 Impresoras de andén y balanzas de recepción instaladas / Mismas fechas, duración y dependencias que los elementos originales. Identificadores de origen: 229
- 93: H4 — entrega del expediente / Mismas fechas, duración y dependencias que los elementos originales. Identificadores de origen: 297
- 94: 3.8.2 Pruebas de aceptación y de accesibilidad con preventistas, conductores y bodega / 3.8.3 Cinco condiciones físicas: −22 °C con guantes, lluvia, calor superior a 34 °C, sol directo y uso con una mano; desconexión separada de 14 horas / Mismas fechas, duración y dependencias que los elementos originales. Identificadores de origen: 126, 127
- 95: 3.8.4 Pruebas de carga con el peak de septiembre y de resiliencia / 3.8.5 Prueba de recuperación ante desastres con conmutación real / 3.8.6 Prueba de seguridad ofensiva de la Etapa 1, por un tercero independiente / 3.8.8 Demostración en Preproducción del despliegue sin interrupción de la Etapa 1 / Mismas fechas, duración y dependencias que los elementos originales. Identificadores de origen: 128, 129, 130, 132
- 96: 3.11.2 Base de conocimiento de incidentes y decisiones de diseño / Mismas fechas, duración y dependencias que los elementos originales. Identificadores de origen: 164
- 97: 4.1.1 Plan de olas de la Etapa 1 por sitio y zona: Talca, Concepción y plataformas de cross-docking / Mismas fechas, duración y dependencias que los elementos originales. Identificadores de origen: 170
- 98: 7.1.1 Plan de capacitación por perfil: usuarios finales, avanzados, administradores, equipo técnico y soporte / 7.1.6 Plataforma de autoformación en línea con registro de avance / Mismas fechas, duración y dependencias que los elementos originales. Identificadores de origen: 236, 241
- 99: 7.1.5 Materiales de capacitación: manuales por perfil, guías rápidas, preguntas frecuentes y videos tutoriales / Mismas fechas, duración y dependencias que los elementos originales. Identificadores de origen: 240
- 100: 7.2.1 Acompañamiento del personal con 20 o 30 años en la compañía / Mismas fechas, duración y dependencias que los elementos originales. Identificadores de origen: 243
- 101: 6.5.2 Terminales de pago configurados, uno por camión / 6.5.5 Impresoras de cabina instaladas / Mismas fechas, duración y dependencias que los elementos originales. Identificadores de origen: 225, 228
- 102: H4 — acta del CLIENTE (límite: mes 10) / Mismas fechas, duración y dependencias que los elementos originales. Identificadores de origen: 298
- 103: 4.1.4 Piloto de cadena de frío en cuatro camiones / Mismas fechas, duración y dependencias que los elementos originales. Identificadores de origen: 173
- 104: 3.8.7 Acta de certificación de la Etapa 1 (H5) / Mismas fechas, duración y dependencias que los elementos originales. Identificadores de origen: 131
- 105: 3.7.3 Saldos migrados desde el WMS de Talca / 3.7.4 Saldos cargados en Concepción desde el conteo físico / Mismas fechas, duración y dependencias que los elementos originales. Identificadores de origen: 121, 122
- 106: 3.10.1.4 Innovación 1: informe del piloto en marcha blanca y habilitación (INN-01.P4) / 3.10.2.4 Innovación 2: informe de validación comparada durante la implementación (INN-02.P4, primera parte) / 3.10.3.4 Innovación 3: informe de validación en marcha blanca con Calidad (INN-03.P4) / Mismas fechas, duración y dependencias que los elementos originales. Identificadores de origen: 146, 151, 156
- 107: 4.1.2 Procedimiento de reversión de la Etapa 1 antes de las 05:30, con versión operativa local y DTE emitidos por el ERP / Mismas fechas, duración y dependencias que los elementos originales. Identificadores de origen: 171
- 108: 7.1.3 Incorporación de conductores de transportistas, escaneos y lectura del rojo / Mismas fechas, duración y dependencias que los elementos originales. Identificadores de origen: 238
- 109: H5 — entrega del expediente / Mismas fechas, duración y dependencias que los elementos originales. Identificadores de origen: 299
- 110: 3.7.5 Acta de conciliación y corte fuera de las ventanas de congelamiento / Mismas fechas, duración y dependencias que los elementos originales. Identificadores de origen: 123
- 111: H5 — acta del CLIENTE (límite: mes 12) / Mismas fechas, duración y dependencias que los elementos originales. Identificadores de origen: 300
- 112: H6 — inicio de marcha blanca (mes 13) / Mismas fechas, duración y dependencias que los elementos originales. Identificadores de origen: 301
- 113: 1.2.5 Documento de línea base de alcance de la Etapa 2: canal moderno y costo de servir (H8) / Mismas fechas, duración y dependencias que los elementos originales. Identificadores de origen: 11
- 114: 2.1.4 Documento de diseño detallado de M11 y del intercambio con las cadenas / Mismas fechas, duración y dependencias que los elementos originales. Identificadores de origen: 51
- 115: 3.6.5 Intercambio electrónico con la principal cadena, con sus pruebas aprobadas (INT-08) / Mismas fechas, duración y dependencias que los elementos originales. Identificadores de origen: 116
- 116: 3.10.4.1 Innovación 5: prototipo e informe de la prueba de comprensión (INN-05.P1) / Mismas fechas, duración y dependencias que los elementos originales. Identificadores de origen: 158
- 117: 4.2.1 Marcha blanca de la Etapa 1 con conciliación diaria (H6) / Mismas fechas, duración y dependencias que los elementos originales. Identificadores de origen: 175
- 118: 7.2.5 Medición de la adopción y plan de acción correctiva / Mismas fechas, duración y dependencias que los elementos originales. Identificadores de origen: 247
- 119: 7.3.1 Certificación de preventistas, conductores y preparadores (Etapa 1) / Mismas fechas, duración y dependencias que los elementos originales. Identificadores de origen: 249
- 120: 2.4.2 Acta de aprobación del diseño detallado de la Etapa 2 (H8) / Mismas fechas, duración y dependencias que los elementos originales. Identificadores de origen: 63
- 121: H8 — entrega del expediente / Mismas fechas, duración y dependencias que los elementos originales. Identificadores de origen: 302
- 122: Inicio de la ola 3 de reparto / Mismas fechas, duración y dependencias que los elementos originales. Identificadores de origen: 314
- 123: 3.10.4.2 Innovación 5: evaluación de privacidad y diseño de la impresión en cabina (INN-05.P2) / Mismas fechas, duración y dependencias que los elementos originales. Identificadores de origen: 159
- 124: H8 — acta del CLIENTE (límite: mes 14) / Mismas fechas, duración y dependencias que los elementos originales. Identificadores de origen: 303
- 125: 3.5.1 Pedido electrónico y aviso de despacho para las cadenas, y portal de proveedores (M11 Canal moderno) / 3.5.2 Portal web de clientes: cuenta, saldo, entregas y documentos / 3.5.3 Portal web de transportistas: rutas asignadas del día siguiente / 3.5.4 Costo de servir por cliente y por entrega (M10 Analítica) / Mismas fechas, duración y dependencias que los elementos originales. Identificadores de origen: 107, 108, 109, 110
- 126: 1.7.2 Primera actualización anual del Plan de Reversibilidad durante la implementación / Mismas fechas, duración y dependencias que los elementos originales. Identificadores de origen: 30
- 127: 3.10.4.3 Innovación 5: cálculo y bloques 1 a 3 de la hoja de negocio (INN-05.P3) / Mismas fechas, duración y dependencias que los elementos originales. Identificadores de origen: 160
- 128: 3.11.1 Documentación técnica, funcional, de arquitectura, de operación y de seguridad / Mismas fechas, duración y dependencias que los elementos originales. Identificadores de origen: 163
- 129: 7.1.4 Traspaso al equipo de TI de cuatro personas del CLIENTE / Mismas fechas, duración y dependencias que los elementos originales. Identificadores de origen: 239
- 130: 3.9.1 Pruebas de integración y regresión sin afectar la Etapa 1 en producción (H9) / Mismas fechas, duración y dependencias que los elementos originales. Identificadores de origen: 134
- 131: 4.2.2 Estabilización de la Etapa 1, acompañamiento en ruta y restauraciones de soporte puente / Mismas fechas, duración y dependencias que los elementos originales. Identificadores de origen: 176
- 132: 7.2.2 Gestión del cambio con las cadenas y los transportistas / Mismas fechas, duración y dependencias que los elementos originales. Identificadores de origen: 244
- 133: 4.2.3 Acta de paso a producción y cierre de la Etapa 1 (H7) / Mismas fechas, duración y dependencias que los elementos originales. Identificadores de origen: 177
- 134: H7 — entrega del expediente / Mismas fechas, duración y dependencias que los elementos originales. Identificadores de origen: 304
- 135: H9 — entrega del expediente / Mismas fechas, duración y dependencias que los elementos originales. Identificadores de origen: 306
- 136: 3.9.3 Pruebas de carga con ambas etapas activas y de resiliencia / 3.9.4 Prueba de recuperación ante desastres con ambas etapas / 3.9.7 Demostración en Preproducción del despliegue sin interrupción de la Etapa 2 / Mismas fechas, duración y dependencias que los elementos originales. Identificadores de origen: 136, 137, 140
- 137: 3.9.5 Prueba de seguridad ofensiva de la Etapa 2, por un tercero independiente / Mismas fechas, duración y dependencias que los elementos originales. Identificadores de origen: 138
- 138: H7 — acta del CLIENTE (límite: mes 16) / Mismas fechas, duración y dependencias que los elementos originales. Identificadores de origen: 305
- 139: 3.6.6 Incorporación de las demás cadenas al intercambio electrónico (INT-08) / Mismas fechas, duración y dependencias que los elementos originales. Identificadores de origen: 117
- 140: 4.1.3 Plan de implantación y reversión de la Etapa 2 fuera de la ventana de 05:30 a 07:00 / Mismas fechas, duración y dependencias que los elementos originales. Identificadores de origen: 172

| ID | Task | Type | Duration | Start | Finish | Predecessors | Holgura (días hábiles) | Crítica |
| --- | --- | --- | --- | --- | --- | --- | --- | --- |
| 141 | PT/H / 5.4.3 Fórmula aprobada del tramo variable: reglas de atribución, canasta e índices (INN-04.P1) |  | 7d | 2028-06-01 | 2028-06-09 |  | 75 | No |
| 142 | PT/H / H9 — acta del CLIENTE (límite: mes 17) | milestone | 0d | 2028-06-01 | 2028-06-01 | 135FS+10d | 19 | No |
| 143 | PT/H / 3.9.2 Pruebas de aceptación y de accesibilidad con cadenas, transportistas, Comercial y Finanzas |  | 10d | 2028-06-02 | 2028-06-15 | 130 | 2 | No |
| 144 | PT/H / 3.9.6 Acta de certificación de la Etapa 2 y cierre del desarrollo (H10) |  | 7d | 2028-06-16 | 2028-06-28 | 130, 136, 137, 143 | 2 | No |
| 145 | PT/H / H10 — entrega del expediente | milestone | 0d | 2028-06-28 | 2028-06-28 | 144FS-1d |  | No |
| 146 | PT/H / 3.10.4.4 Innovación 5: hoja certificada, en marcha blanca y en producción (INN-05.P4, primera parte) |  | 62d | 2028-07-03 | 2028-09-29 |  | 20 | No |
| 147 | PT/H / 7.3.2 Certificación de Comercial y Finanzas en costo de servir (Etapa 2) |  | 17d | 2028-07-03 | 2028-07-25 |  | 4 | No |
| 148 | PT/H / H10 — acta del CLIENTE (límite: mes 18) | milestone | 0d | 2028-07-12 | 2028-07-12 | 145FS+10d | 13 | No |
| 149 | RC / H11 — inicio de marcha blanca (mes 19) | milestone | 0d | 2028-08-01 | 2028-08-01 | 150SS | 0 | Sí |
| 150 | PT/H / 4.3.1 Marcha blanca de la Etapa 2 en convivencia con la Etapa 1 y fuente única de datos (H11) |  | 41d | 2028-08-01 | 2028-09-29 | 115, 140, 148 |  | No |
| 151 | PT/H / 4.3.4 Garantía de correcto funcionamiento constituida, condición de la aceptación final (H12) |  | 7d | 2028-09-13 | 2028-09-25 |  | 4 | No |
| 152 | PT/H / 4.3.2 Estabilización de la Etapa 2 con Comercial, Finanzas, cadenas y transportistas |  | 41d | 2028-10-02 | 2028-11-30 |  |  | No |
| 153 | PT/H / 4.3.3 Acta de paso a producción y aceptación final de la implementación (H12) |  | 7d | 2028-10-02 | 2028-10-11 | 129, 147, 150, 151 | 3 | No |
| 154 | PT/H / H12 — entrega del expediente | milestone | 0d | 2028-10-11 | 2028-10-11 | 151FS-1d, 153FS-1d |  | No |
| 155 | RC / H12 — acta del CLIENTE (límite: mes 21) | milestone | 0d | 2028-10-25 | 2028-10-25 | 154FS+10d | 3 | Sí |

Notes:
- 141: 5.4.3 Fórmula aprobada del tramo variable: reglas de atribución, canasta e índices (INN-04.P1) / Mismas fechas, duración y dependencias que los elementos originales. Identificadores de origen: 201
- 142: H9 — acta del CLIENTE (límite: mes 17) / Mismas fechas, duración y dependencias que los elementos originales. Identificadores de origen: 307
- 143: 3.9.2 Pruebas de aceptación y de accesibilidad con cadenas, transportistas, Comercial y Finanzas / Mismas fechas, duración y dependencias que los elementos originales. Identificadores de origen: 135
- 144: 3.9.6 Acta de certificación de la Etapa 2 y cierre del desarrollo (H10) / Mismas fechas, duración y dependencias que los elementos originales. Identificadores de origen: 139
- 145: H10 — entrega del expediente / Mismas fechas, duración y dependencias que los elementos originales. Identificadores de origen: 308
- 146: 3.10.4.4 Innovación 5: hoja certificada, en marcha blanca y en producción (INN-05.P4, primera parte) / Mismas fechas, duración y dependencias que los elementos originales. Identificadores de origen: 161
- 147: 7.3.2 Certificación de Comercial y Finanzas en costo de servir (Etapa 2) / Mismas fechas, duración y dependencias que los elementos originales. Identificadores de origen: 250
- 148: H10 — acta del CLIENTE (límite: mes 18) / Mismas fechas, duración y dependencias que los elementos originales. Identificadores de origen: 309
- 149: H11 — inicio de marcha blanca (mes 19) / Mismas fechas, duración y dependencias que los elementos originales. Identificadores de origen: 310
- 150: 4.3.1 Marcha blanca de la Etapa 2 en convivencia con la Etapa 1 y fuente única de datos (H11) / Mismas fechas, duración y dependencias que los elementos originales. Identificadores de origen: 179
- 151: 4.3.4 Garantía de correcto funcionamiento constituida, condición de la aceptación final (H12) / Mismas fechas, duración y dependencias que los elementos originales. Identificadores de origen: 182
- 152: 4.3.2 Estabilización de la Etapa 2 con Comercial, Finanzas, cadenas y transportistas / Mismas fechas, duración y dependencias que los elementos originales. Identificadores de origen: 180
- 153: 4.3.3 Acta de paso a producción y aceptación final de la implementación (H12) / Mismas fechas, duración y dependencias que los elementos originales. Identificadores de origen: 181
- 154: H12 — entrega del expediente / Mismas fechas, duración y dependencias que los elementos originales. Identificadores de origen: 311
- 155: H12 — acta del CLIENTE (límite: mes 21) / Mismas fechas, duración y dependencias que los elementos originales. Identificadores de origen: 312
